# Agile Project Management

Schedule from MS Project, 2014-06-16 to 2014-08-15, A marks actual dates.

## Calendars

- 标准: Mon-Fri 08:00-12:00, 13:00-17:00; Sat-Sun off.

## Resources

| Resource | Group |
| --- | --- |
| 丁志浩 | 开发 |
| 黄启彬 | 开发 |
| 王传虎 | 开发 |
| 张春林 | 开发 |
| 张力 | 规划用户 |
| 规划用户A | 规划用户 |
| 资金用户 | 财务用户 |
| 资产用户 | 财务用户 |
| 发管中心用户 | 机务用户 |
| 技术标准用户 | 机务用户 |
| 机身系统用户 | 机务用户 |
| 航材用户 | 机务用户 |

## Schedule

| ID | WBS | Task | Type | Duration | Start | Finish | Predecessors | Complete | Remaining | Baseline start | Baseline finish | Baseline duration | Total slack | Free slack | Constraint | Resources | Work | Actual work |
| --- | --- | --- | --- | --- | --- | --- | --- | --- | --- | --- | --- | --- | --- | --- | --- | --- | --- | --- |
| 1 | 1 | 测试准备 |  | 2w | 2014-06-16 | 2014-06-27 |  |  |  | 2014-06-16 | 2014-06-27 | 2w | 35d |  |  |  |  |  |
| 2 | 2 | 培训、测试 | manual | 3w | 2014-06-30 | 2014-07-18 |  |  |  | 2014-06-30 | 2014-07-11 | 2w |  |  |  |  |  |  |
| 3 | 3 | 试运行 |  | 20d? | 2014-07-21 | 2014-08-15 |  |  |  | 2014-06-16 | 2014-06-16 | 1d? | 0d |  | finish no earlier than 2014-08-15 |  |  |  |
| 4 | 4 | 编写测试用例 |  | 9d | 2014-06-17 | 2014-06-27 |  |  |  | 2014-06-17 | 2014-06-27 | 9d | 35d |  | finish no earlier than 2014-06-27 | 张春林 | 72h |  |
| 5 | 5 | 编写操作手册 |  | 9d? | 2014-06-17 | 2014-06-27 |  |  |  | 2014-06-17 | 2014-06-27 | 9d? | 35d |  | finish no earlier than 2014-06-27 | 王传虎 | 72h |  |
| 6 | 6 | **系统完善** |  | 26.5d? | 2014-06-16 A | 2014-07-22 |  | 21% | 20.86d? | 2014-06-16 | 2014-07-22 | 26.5d? | 18.5d |  |  |  | 148h | 37h |
| 7 | 6.1 | **框架** |  | 5d | 2014-06-16 A | 2014-06-20 |  | 75% | 1.25d | 2014-06-16 | 2014-06-20 | 5d |  |  |  |  | 12h | 9h |
| 8 | 6.1.1 | 单点登录 |  | 3d | 2014-06-16 A | 2014-06-18 |  | 75% | 0.75d | 2014-06-16 | 2014-06-18 | 3d | 2d | 0d |  | 丁志浩 [50%] | 12h | 9h |
| 9 | 6.2 | **基础管理模块** |  | 2d | 2014-06-26 | 2014-06-27 |  |  |  | 2014-06-26 | 2014-06-27 | 2d | 35d |  |  |  | 8h |  |
| 10 | 6.2.1 | 基础数据维护页面 |  | 2d | 2014-06-26 | 2014-06-27 |  |  |  | 2014-06-26 | 2014-06-27 | 2d | 35d |  |  | 丁志浩 [50%] | 8h |  |
| 11 | 6.3 | **运力规划模块** |  | 16d? | 2014-06-23 | 2014-07-14 |  |  |  | 2014-06-23 | 2014-07-14 | 16d? | 24d |  |  |  | 32h |  |
| 12 | 6.3.1 | 后台计算 |  | 1d? | 2014-06-23 | 2014-06-23 |  |  |  | 2014-06-23 | 2014-06-23 | 1d? | 39d |  |  | 黄启彬 | 8h |  |
| 13 | 6.3.2 | 查询单机档案 |  | 6d? | 2014-07-07 | 2014-07-14 | 38 |  |  | 2014-07-07 | 2014-07-14 | 6d? | 24d |  | start no earlier than 2014-07-07 | 丁志浩 [50%] | 24h |  |
| 14 | 6.4 | **采购合同模块** |  | 2d? | 2014-06-23 | 2014-06-24 |  |  |  | 2014-06-23 | 2014-06-24 | 2d? | 37d |  |  |  | 8h |  |
| 15 | 6.4.1 | 匹配计划飞机 |  | 2d? | 2014-06-23 A | 2014-06-24 | 17 | 50% | 1d? | 2014-06-23 | 2014-06-24 | 2d? | 0d |  |  | 丁志浩 [50%] | 8h | 4h |
| 16 | 6.5 | **应付款模块** |  | 5d? | 2014-06-19 | 2014-06-25 |  |  |  | 2014-06-19 | 2014-06-25 | 5d? | 37d |  |  |  | 12h |  |
| 17 | 6.5.1 | 付款计划数据视图调整 |  | 2d? | 2014-06-19 | 2014-06-20 | 8 |  |  | 2014-06-19 | 2014-06-20 | 2d? | 37d | 0d |  | 丁志浩 [50%] | 8h |  |
| 18 | 6.5.2 | 分析付款计划执行 |  | 1d? | 2014-06-25 | 2014-06-25 | 15 |  |  | 2014-06-25 | 2014-06-25 | 1d? | 37d |  |  | 丁志浩 [50%] | 4h |  |
| 19 | 6.6 | **发动机管理模块** |  | 26.5d? | 2014-06-16 A | 2014-07-22 |  | 44% | 14.91d? | 2014-06-16 | 2014-07-22 | 26.5d? | 18.5d |  |  |  | 60h | 28h |
| 20 | 6.6.1 | 后台计算调试 |  | 1d? | 2014-06-24 | 2014-06-24 |  |  |  | 2014-06-24 | 2014-06-24 | 1d? | 38d |  |  | 黄启彬 | 8h |  |
| 21 | 6.6.2 | APU滑油监控页面 |  | 1d? | 2014-07-04 | 2014-07-04 |  |  |  | 2014-07-04 | 2014-07-04 | 1d? | 30d |  |  | 丁志浩 [50%] | 4h |  |
| 22 | 6.6.3 | 维护在位信息页面 |  | 2d? | 2014-06-16 A | 2014-06-17 |  | 75% | 0.5d? | 2014-06-16 | 2014-06-17 | 2d? | 30d | 2d |  | 黄启彬 | 16h | 12h |
| 23 | 6.6.4 | 查询控制方案 |  | 1d? | 2014-06-18 A | 2014-06-18 A |  | 100% |  | 2014-06-18 | 2014-06-18 | 1d? |  |  |  | 黄启彬 | 8h | 8h |
| 24 | 6.6.5 | 查询到寿日期 |  | 1d? | 2014-06-19 A | 2014-06-19 A |  | 100% |  | 2014-06-19 | 2014-06-19 | 1d? |  |  |  | 黄启彬 | 8h | 8h |
| 25 | 6.6.6 | 租赁月度报表数据查询 |  | 2d? | 2014-07-18 | 2014-07-22 | 30 |  |  | 2014-07-18 | 2014-07-22 | 2d? | 18.5d |  | start no earlier than 2014-06-30 | 黄启彬 | 16h |  |

Notes:
- 10: 币种、舱位等级、发动机型号、发动机推力等级、供应商、制造商

| ID | WBS | Task | Duration | Start | Finish | Predecessors | Complete | Baseline start | Baseline finish | Baseline duration | Total slack | Free slack | Constraint | Resources | Work | Actual work |
| --- | --- | --- | --- | --- | --- | --- | --- | --- | --- | --- | --- | --- | --- | --- | --- | --- |
| 26 | 6.7 | **适航管理模块** | 1d? | 2014-06-25 | 2014-06-25 |  |  | 2014-06-25 | 2014-06-25 | 1d? | 37d |  |  |  | 8h |  |
| 27 | 6.7.1 | AD/SB数据导入 | 1d? | 2014-06-25 | 2014-06-25 |  |  | 2014-06-25 | 2014-06-25 | 1d? | 37d |  |  | 黄启彬 | 8h |  |
| 28 | 6.8 | **文档库模块** | 1d? | 2014-06-26 | 2014-06-26 |  |  | 2014-06-26 | 2014-06-26 | 1d? | 36d |  |  |  | 8h |  |
| 29 | 6.8.1 | 建索引的后台服务 | 1d? | 2014-06-26 A | 2014-06-26 A |  | 100% | 2014-06-26 | 2014-06-26 | 1d? |  |  |  | 黄启彬 | 8h | 8h |
| 30 | 7 | **系统集成** | 10d? | 2014-06-20 | 2014-07-03 | 22, 23, 24 |  | 2014-06-20 | 2014-07-03 | 10d? | 19d | 0d |  |  | 24h |  |
| 31 | 7.1 | 同步供应商 | 1d? | 2014-06-20 | 2014-06-20 |  |  | 2014-06-20 | 2014-06-20 | 1d? | 28d |  |  | 黄启彬 | 8h |  |
| 32 | 7.2 | 同步发动机件号 | 1d? | 2014-06-27 | 2014-06-27 |  |  | 2014-06-27 | 2014-06-27 | 1d? | 23d |  |  | 黄启彬 | 8h |  |
| 33 | 7.3 | 同步发动机序号 | 1d? | 2014-07-03 | 2014-07-03 |  |  | 2014-07-03 | 2014-07-03 | 1d? | 19d |  |  | 黄启彬 | 8h |  |
| 34 | 8 | **基础数据维护** | 3d? | 2014-06-30 | 2014-07-02 | 2SS |  | 2014-06-30 | 2014-07-02 | 3d? | 32d |  |  |  | 42h |  |
| 35 | 8.1 | 权限管理 | 1d? | 2014-06-30 | 2014-06-30 |  |  | 2014-06-30 | 2014-06-30 | 1d? | 34d |  |  | 张春林 [25%] | 2h |  |
| 36 | 8.2 | 运力规划数据迁移 | 3d | 2014-06-30 | 2014-07-02 |  |  | 2014-06-30 | 2014-07-02 | 3d | 32d |  |  | 黄启彬 | 24h |  |
| 37 | 8.3 | 历史拆装记录导入 | 2d? | 2014-06-30 | 2014-07-01 |  |  | 2014-06-30 | 2014-07-01 | 2d? | 33d |  |  | 王传虎 | 16h |  |
| 38 | 9 | **用户培训** | 4d? | 2014-06-30 | 2014-07-03 | 2SS |  | 2014-06-30 | 2014-07-03 | 4d? | 6.5d | 0d |  |  | 32h |  |
| 39 | 9.1 | 规划 | 1d? | 2014-06-30 | 2014-06-30 |  |  | 2014-06-30 | 2014-06-30 | 1d? | 9.5d |  | start no earlier than 2014-06-30 | 丁志浩 | 8h |  |
| 40 | 9.2 | 财务 | 1d? | 2014-07-01 | 2014-07-01 |  |  | 2014-07-01 | 2014-07-01 | 1d? | 8.5d |  | finish no earlier than 2014-07-01 | 丁志浩 | 8h |  |
| 41 | 9.3 | 发管中心 | 1d? | 2014-07-02 | 2014-07-02 |  |  | 2014-07-02 | 2014-07-02 | 1d? | 7.5d |  | finish no earlier than 2014-07-02 | 丁志浩 | 8h |  |
| 42 | 9.4 | 机务其他 | 1d | 2014-07-03 | 2014-07-03 |  |  | 2014-07-03 | 2014-07-03 | 1d | 6.5d |  | finish no earlier than 2014-07-03 | 丁志浩 | 8h |  |
| 43 | 10 | **功能测试** | 10.5d? | 2014-07-04 | 2014-07-18 | 38 |  | 2014-07-04 | 2014-07-18 | 10.5d? | 6.5d | 0d |  |  | 232h |  |
| 44 | 10.1 | **开发方** | 10.5d? | 2014-07-04 | 2014-07-18 |  |  | 2014-07-04 | 2014-07-18 | 10.5d? | 6.5d |  |  |  | 84h |  |
| 45 | 10.1.1 | 基础管理模块 | 0.5d? | 2014-07-04 | 2014-07-04 |  |  | 2014-07-04 | 2014-07-04 | 0.5d? | 6.5d | 0d |  | 黄启彬 | 4h |  |
| 46 | 10.1.2 | 飞机构型模块 | 0.5d? | 2014-07-04 | 2014-07-04 | 45 |  | 2014-07-04 | 2014-07-04 | 0.5d? | 6.5d | 0d |  | 黄启彬 | 4h |  |
| 47 | 10.1.3 | 运力规划模块 | 2d? | 2014-07-07 | 2014-07-09 | 53 |  | 2014-07-07 | 2014-07-09 | 2d? | 6.5d | 0d |  | 黄启彬 | 16h |  |
| 48 | 10.1.4 | 采购合同模块 | 2d? | 2014-07-09 | 2014-07-11 | 47 |  | 2014-07-09 | 2014-07-11 | 2d? | 6.5d | 0d |  | 黄启彬 | 16h |  |
| 49 | 10.1.5 | 应付款模块 | 2d? | 2014-07-11 | 2014-07-15 | 48 |  | 2014-07-11 | 2014-07-15 | 2d? | 6.5d | 0d |  | 黄启彬 | 16h |  |
| 50 | 10.1.6 | 附件管理模块 | 0.5d? | 2014-07-17 | 2014-07-17 | 51 |  | 2014-07-17 | 2014-07-17 | 0.5d? | 6.5d | 0d |  | 黄启彬 | 4h |  |
| 51 | 10.1.7 | 发动机管理模块 | 2d? | 2014-07-15 | 2014-07-17 | 49 |  | 2014-07-15 | 2014-07-17 | 2d? | 6.5d | 0d |  | 黄启彬 | 16h |  |
| 52 | 10.1.8 | 适航管理模块 | 0.5d? | 2014-07-18 | 2014-07-18 | 50 |  | 2014-07-18 | 2014-07-18 | 0.5d? | 6.5d | 0d |  | 黄启彬 | 4h |  |
| 53 | 10.1.9 | 文档库模块 | 0.5d? | 2014-07-07 | 2014-07-07 | 46 |  | 2014-07-07 | 2014-07-07 | 0.5d? | 6.5d | 0d |  | 黄启彬 | 4h |  |

| ID | WBS | Task | Duration | Start | Finish | Predecessors | Baseline start | Baseline finish | Baseline duration | Total slack | Free slack | Constraint | Resources | Work |
| --- | --- | --- | --- | --- | --- | --- | --- | --- | --- | --- | --- | --- | --- | --- |
| 54 | 10.2 | **川航** | 10.5d? | 2014-07-04 | 2014-07-18 |  | 2014-07-04 | 2014-07-18 | 10.5d? | 6.5d |  |  |  | 148h |
| 55 | 10.2.1 | 基础管理模块 | 0.5d? | 2014-07-04 | 2014-07-04 | 45SS | 2014-07-04 | 2014-07-04 | 0.5d? | 16.5d |  |  | 张力 | 4h |
| 56 | 10.2.2 | 飞机构型模块 | 0.5d? | 2014-07-04 | 2014-07-04 | 46SS | 2014-07-04 | 2014-07-04 | 0.5d? | 16d |  |  | 张力 | 4h |
| 57 | 10.2.3 | 运力规划模块 | 2d | 2014-07-07 | 2014-07-09 | 47SS | 2014-07-07 | 2014-07-09 | 2d | 13.5d |  |  | 张力 | 16h |
| 58 | 10.2.4 | 采购合同模块 | 2d | 2014-07-09 | 2014-07-11 | 48SS | 2014-07-09 | 2014-07-11 | 2d | 11.5d |  |  | 张力; 资产用户; 资金用户 | 48h |
| 59 | 10.2.5 | 应付款模块 | 2d | 2014-07-11 | 2014-07-15 | 49SS | 2014-07-11 | 2014-07-15 | 2d | 9.5d |  |  | 张力; 资产用户; 资金用户 | 48h |
| 60 | 10.2.6 | 附件管理模块 | 0.5d? | 2014-07-17 | 2014-07-17 | 50SS | 2014-07-17 | 2014-07-17 | 0.5d? | 7d |  |  | 技术标准用户 | 4h |
| 61 | 10.2.7 | 发动机管理模块 | 2d | 2014-07-15 | 2014-07-17 | 51SS | 2014-07-15 | 2014-07-17 | 2d | 7.5d |  |  | 发管中心用户 | 16h |
| 62 | 10.2.8 | 适航管理模块 | 0.5d? | 2014-07-18 | 2014-07-18 | 52SS | 2014-07-18 | 2014-07-18 | 0.5d? | 6.5d |  |  | 机身系统用户 | 4h |
| 63 | 10.2.9 | 文档库模块 | 0.5d? | 2014-07-07 | 2014-07-07 | 53SS | 2014-07-07 | 2014-07-07 | 0.5d? | 15.5d |  |  | 张力 | 4h |
| 64 | 11 | **Bug修改** | 28.5d? | 2014-06-30 | 2014-08-07 | 2SS | 2014-06-30 | 2014-08-07 | 28.5d? | 6.5d |  |  |  | 128h |
| 65 | 11.1 | **基础管理模块** | 1d? | 2014-07-01 | 2014-07-01 |  | 2014-07-01 | 2014-07-01 | 1d? | 33d |  |  |  | 8h |
| 66 | 11.1.1 | 维护经营证照 | 1d? | 2014-07-01 | 2014-07-01 |  | 2014-07-01 | 2014-07-01 | 1d? | 33d |  |  | 张春林 | 8h |
| 67 | 11.2 | **飞机构型模块** | 1d? | 2014-07-02 | 2014-07-02 |  | 2014-07-02 | 2014-07-02 | 1d? | 32d |  |  |  | 8h |
| 68 | 11.2.1 | 维护飞机证照 | 1d? | 2014-07-02 | 2014-07-02 |  | 2014-07-02 | 2014-07-02 | 1d? | 32d |  |  | 张春林 | 8h |
| 69 | 11.3 | 运力规划模块 | 1d? | 2014-06-30 | 2014-06-30 |  | 2014-06-30 | 2014-06-30 | 1d? | 34d |  |  |  |  |
| 70 | 11.4 | 采购合同模块 | 1d? | 2014-06-30 | 2014-06-30 |  | 2014-06-30 | 2014-06-30 | 1d? | 34d |  |  |  |  |
| 71 | 11.5 | 应付款模块 | 1d? | 2014-06-30 | 2014-06-30 |  | 2014-06-30 | 2014-06-30 | 1d? | 34d |  |  |  |  |
| 72 | 11.6 | 附件管理模块 | 1d? | 2014-06-30 | 2014-06-30 |  | 2014-06-30 | 2014-06-30 | 1d? | 34d |  |  |  |  |
| 73 | 11.7 | 发动机管理模块 | 1d? | 2014-06-30 | 2014-06-30 |  | 2014-06-30 | 2014-06-30 | 1d? | 34d |  |  |  |  |
| 74 | 11.8 | 适航管理模块 | 1d? | 2014-06-30 | 2014-06-30 |  | 2014-06-30 | 2014-06-30 | 1d? | 34d |  |  |  |  |
| 75 | 11.9 | 文档库模块 | 1d? | 2014-06-30 | 2014-06-30 |  | 2014-06-30 | 2014-06-30 | 1d? | 34d |  |  |  |  |
| 76 | 11.10 | 测试Bug修改 | 14d? | 2014-07-18 | 2014-08-07 | 43 | 2014-07-18 | 2014-08-07 | 14d? | 6.5d |  | start no earlier than 2014-07-14 |  | 112h |
| 77 | 12 | **试运行数据准备** | 14d? | 2014-07-18 | 2014-08-07 | 43 | 2014-07-18 | 2014-08-07 | 14d? | 6.5d |  |  |  | 236h |
| 78 | 12.1 | 权限配置 | 1d? | 2014-07-18 | 2014-07-21 |  | 2014-07-18 | 2014-07-21 | 1d? | 6.5d | 0d |  |  | 4h |
| 79 | 12.2 | 运力规划数据迁移 | 1d? | 2014-07-18 | 2014-07-21 |  | 2014-07-18 | 2014-07-21 | 1d? | 19.5d |  |  |  | 8h |
| 80 | 12.3 | 历史拆装记录导入 | 1d? | 2014-07-18 | 2014-07-21 |  | 2014-07-18 | 2014-07-21 | 1d? | 19.5d |  |  |  | 8h |
| 81 | 12.4 | 基础配置 | 1d? | 2014-07-18 | 2014-07-21 |  | 2014-07-18 | 2014-07-21 | 1d? | 6.5d | 0d |  |  | 24h |

Notes:
- 66: 维护扫描件，会出现OutOfMemory的溢出错误
- 68: 维护扫描件，会出现OutOfMemory的溢出错误

| ID | WBS | Task | Duration | Start | Finish | Predecessors | Baseline start | Baseline finish | Baseline duration | Total slack | Free slack | Resources | Work |
| --- | --- | --- | --- | --- | --- | --- | --- | --- | --- | --- | --- | --- | --- |
| 82 | 12.5 | **历史数据录入** | 13d | 2014-07-21 | 2014-08-07 | 78, 81 | 2014-07-21 | 2014-08-07 | 13d | 6.5d |  |  | 192h |
| 83 | 12.5.1 | 采购合同 | 5d | 2014-07-21 | 2014-07-28 |  | 2014-07-21 | 2014-07-28 | 5d | 8.5d | 0d | 张力 | 40h |
| 84 | 12.5.2 | 维修合同 | 5d | 2014-07-21 | 2014-07-28 |  | 2014-07-21 | 2014-07-28 | 5d | 6.5d | 0d | 资产用户 | 40h |
| 85 | 12.5.3 | 采购发票 | 3d | 2014-07-28 | 2014-07-31 | 83 | 2014-07-28 | 2014-07-31 | 3d | 8.5d | 0d | 资金用户 | 24h |
| 86 | 12.5.4 | 维修发票 | 5d | 2014-07-28 | 2014-08-04 | 84 | 2014-07-28 | 2014-08-04 | 5d | 9.5d |  | 资产用户 | 40h |
| 87 | 12.5.5 | 采购付款计划 | 3d | 2014-07-31 | 2014-08-05 | 85 | 2014-07-31 | 2014-08-05 | 3d | 8.5d |  | 资金用户 | 24h |
| 88 | 12.5.6 | 维修付款计划 | 3d | 2014-08-04 | 2014-08-07 | 84 | 2014-08-04 | 2014-08-07 | 3d | 6.5d |  | 资产用户 | 24h |
