# Agile Project Management

Schedule from MS Project, 2013-11-01 to 2014-03-07, costs in ¥, A marks actual dates.

## Calendars

- 标准: Mon-Fri 08:00-12:00, 13:00-17:00; Sat-Sun off.

## Resources

| Resource | Rate |
| --- | --- |
| 丁志浩 | 30 |
| 陈春勇 | 30 |
| 黄启彬 | 30 |
| 林晓伟 | 30 |
| 涂明晟 | 30 |
| 刘刚 | 20 |
| 刘潇 | 30 |

## Schedule

| ID | WBS | Task | Duration | Start | Finish | Predecessors | Complete | Remaining | Baseline start | Baseline finish | Baseline duration | Total slack | Free slack | Constraint | Resources | Work | Actual work | Cost | Baseline cost | Actual cost |
| --- | --- | --- | --- | --- | --- | --- | --- | --- | --- | --- | --- | --- | --- | --- | --- | --- | --- | --- | --- | --- |
| 1 | 1 | 冲刺 1 | 6d? | 2013-12-11 | 2013-12-18 |  |  |  | 2013-12-11 | 2013-12-18 | 6d? | 57d |  | finish no earlier than 2013-12-18 |  |  |  |  |  |  |
| 2 | 2 | 冲刺 2 | 7d? | 2013-12-19 | 2013-12-27 |  |  |  | 2013-12-19 | 2013-12-27 | 7d? | 50d |  | finish no earlier than 2013-12-27 |  |  |  |  |  |  |
| 3 | 3 | **优化技术架构** | 11d? | 2013-11-01 A | 2013-11-15 A |  | 100% |  | 2013-11-01 | 2013-11-15 | 11d? |  |  |  |  | 176h | 176h | 5,280 | 5,280 | 5,280 |
| 4 | 3.1 | 领域层优化 | 2d? | 2013-11-01 A | 2013-11-04 A |  | 100% |  | 2013-11-01 | 2013-11-04 | 2d? |  |  | start no earlier than 2013-11-01 | 丁志浩 | 16h | 16h | 480 | 480 | 480 |
| 5 | 3.2 | 基础结构层优化 | 2d? | 2013-11-05 A | 2013-11-06 A |  | 100% |  | 2013-11-05 | 2013-11-06 | 2d? |  |  |  | 丁志浩 | 16h | 16h | 480 | 480 | 480 |
| 6 | 3.3 | 应用层优化 | 2d? | 2013-11-07 A | 2013-11-08 A |  | 100% |  | 2013-11-07 | 2013-11-08 | 2d? |  |  |  | 丁志浩 | 16h | 16h | 480 | 480 | 480 |
| 7 | 3.4 | **分布服务层优化** | 5d | 2013-11-01 A | 2013-11-07 A |  | 100% |  | 2013-11-01 | 2013-11-07 | 5d |  |  |  |  | 40h | 40h | 1,200 | 1,200 | 1,200 |
| 8 | 3.4.1 | 实现更新接口 | 5d | 2013-11-01 A | 2013-11-07 A |  | 100% |  | 2013-11-01 | 2013-11-07 | 5d |  |  | finish no earlier than 2013-11-07 | 陈春勇 | 40h | 40h | 1,200 | 1,200 | 1,200 |
| 9 | 3.5 | **表示层优化** | 6d? | 2013-11-08 A | 2013-11-15 A |  | 100% |  | 2013-11-08 | 2013-11-15 | 6d? |  |  |  |  | 88h | 88h | 2,640 | 2,640 | 2,640 |
| 10 | 3.5.1 | 实现客户端服务 | 2d | 2013-11-11 A | 2013-11-12 A |  | 100% |  | 2013-11-11 | 2013-11-12 | 2d |  |  |  | 丁志浩 | 16h | 16h | 480 | 480 | 480 |
| 11 | 3.5.2 | 实现ViewModel基类 | 3d? | 2013-11-13 A | 2013-11-15 A |  | 100% |  | 2013-11-13 | 2013-11-15 | 3d? |  |  | finish no earlier than 2013-11-15 | 丁志浩 | 24h | 24h | 720 | 720 | 720 |
| 12 | 3.5.3 | 优化客户端集合类 | 4d? | 2013-11-08 A | 2013-11-13 A |  | 100% |  | 2013-11-08 | 2013-11-13 | 4d? |  |  | finish no earlier than 2013-11-13 | 陈春勇 | 32h | 32h | 960 | 960 | 960 |
| 13 | 3.5.4 | 重写工具类 | 2d? | 2013-11-14 A | 2013-11-15 A |  | 100% |  | 2013-11-14 | 2013-11-15 | 2d? |  |  | start no earlier than 2013-11-14 | 陈春勇 | 16h | 16h | 480 | 480 | 480 |
| 14 | 4 | **采购管理模块** | 53.5d? | 2013-11-18 A | 2014-01-30 | 3 | 86% | 7.48d? | 2013-11-18 | 2014-01-21 | 47d? | -39.5d | 0d |  |  | 343.2h | 295.2h | 10,296 | 10,320 | 8,856 |
| 15 | 4.1 | **管理合作公司** | 8d? | 2013-11-18 A | 2013-11-27 A |  | 100% |  | 2013-11-18 | 2013-11-27 | 8d? |  |  |  |  | 63.2h | 63.2h | 1,896 | 1,920 | 1,896 |
| 16 | 4.1.1 | 维护供应商类别 | 1.9d? | 2013-11-18 A | 2013-11-19 A |  | 100% |  | 2013-11-18 | 2013-11-19 | 2d? |  |  |  | 陈春勇 | 15.2h | 15.2h | 456 | 480 | 456 |
| 17 | 4.1.2 | 维护供应商 | 2d? | 2013-11-20 A | 2013-11-21 A |  | 100% |  | 2013-11-20 | 2013-11-21 | 2d? |  |  |  | 陈春勇 | 16h | 16h | 480 | 480 | 480 |
| 18 | 4.1.3 | 维护供应商可供物料 | 2d? | 2013-11-22 A | 2013-11-25 A |  | 100% |  | 2013-11-22 | 2013-11-25 | 2d? |  |  |  | 陈春勇 | 16h | 16h | 480 | 480 | 480 |
| 19 | 4.1.4 | 维护BFE承运人 | 2d? | 2013-11-26 A | 2013-11-27 A |  | 100% |  | 2013-11-26 | 2013-11-27 | 2d? |  |  |  | 陈春勇 | 16h | 16h | 480 | 480 | 480 |
| 20 | 4.2 | **管理采购合同** | 11d? | 2013-11-18 A | 2013-12-02 A |  | 100% |  | 2013-11-18 | 2013-12-02 | 11d? |  |  |  |  | 88h | 88h | 2,640 | 2,640 | 2,640 |
| 21 | 4.2.1 | 管理飞机购买合同 | 3d? | 2013-11-18 A | 2013-11-20 A |  | 100% |  | 2013-11-18 | 2013-11-20 | 3d? |  |  | start no earlier than 2013-11-18 | 丁志浩 | 24h | 24h | 720 | 720 | 720 |
| 22 | 4.2.2 | 管理飞机租赁合同 | 2d? | 2013-11-21 A | 2013-11-22 A |  | 100% |  | 2013-11-21 | 2013-11-22 | 2d? |  |  |  | 丁志浩 | 16h | 16h | 480 | 480 | 480 |
| 23 | 4.2.3 | 管理发动机购买合同 | 2d? | 2013-11-25 A | 2013-11-26 A |  | 100% |  | 2013-11-25 | 2013-11-26 | 2d? |  |  |  | 丁志浩 | 16h | 16h | 480 | 480 | 480 |
| 24 | 4.2.4 | 管理发动机租赁合同 | 2d? | 2013-11-27 A | 2013-11-28 A |  | 100% |  | 2013-11-27 | 2013-11-28 | 2d? |  |  |  | 丁志浩 | 16h | 16h | 480 | 480 | 480 |
| 25 | 4.2.5 | 管理BFE合同 | 2d? | 2013-11-29 A | 2013-12-02 A |  | 100% |  | 2013-11-29 | 2013-12-02 | 2d? |  |  |  | 丁志浩 | 16h | 16h | 480 | 480 | 480 |

Notes:
- 16: 2014年1月14日 / 供应商类别增加其他。

| ID | WBS | Task | Duration | Start | Finish | Predecessors | Complete | Remaining | Actual start | Baseline start | Baseline finish | Baseline duration | Total slack | Free slack | Constraint | Resources | Work | Actual work | Cost | Baseline cost | Actual cost |
| --- | --- | --- | --- | --- | --- | --- | --- | --- | --- | --- | --- | --- | --- | --- | --- | --- | --- | --- | --- | --- | --- |
| 26 | 4.3 | **管理维修合同** | 44.25d? | 2013-11-18 A | 2014-01-17 |  | 86% | 6.32d? |  | 2013-11-18 | 2014-01-14 | 42d? | -36.5d | 0d |  |  | 56h | 48h | 1,680 | 1,680 | 1,440 |
| 27 | 4.3.1 | 管理发动机维修合同 | 2d? | 2013-11-18 A | 2013-11-19 A |  | 100% |  |  | 2013-11-18 | 2013-11-19 | 2d? |  |  |  | 林晓伟 | 16h | 16h | 480 | 480 | 480 |
| 28 | 4.3.2 | 管理APU维修合同 | 2d? | 2013-11-20 A | 2013-11-21 A |  | 100% |  |  | 2013-11-20 | 2013-11-21 | 2d? |  |  |  | 林晓伟 | 16h | 16h | 480 | 480 | 480 |
| 29 | 4.3.3 | 管理起落架维修合同 | 2d? | 2013-11-22 A | 2013-11-25 A |  | 100% |  |  | 2013-11-22 | 2013-11-25 | 2d? |  |  |  | 林晓伟 | 16h | 16h | 480 | 480 | 480 |
| 30 | 4.3.4 | 管理机身维修合同 | 1d? | 2014-01-16 | 2014-01-17 |  |  |  |  | 2014-01-14 | 2014-01-14 | 1d? | -36.5d | 0d | start no earlier than 2014-01-14 | 林晓伟 | 8h |  | 240 | 240 |  |
| 31 | 4.4 | **管理接收** | 10d? | 2013-11-18 A | 2013-11-29 A |  | 100% |  |  | 2013-11-18 | 2013-11-29 | 10d? |  |  |  |  | 80h | 80h | 2,400 | 2,400 | 2,400 |
| 32 | 4.4.1 | 匹配计划飞机 | 2d? | 2013-11-18 A | 2013-11-19 A |  | 100% |  |  | 2013-11-18 | 2013-11-19 | 2d? |  |  |  | 黄启彬 | 16h | 16h | 480 | 480 | 480 |
| 33 | 4.4.2 | 维护飞机交付通知 | 2d? | 2013-11-20 A | 2013-11-21 A |  | 100% |  |  | 2013-11-20 | 2013-11-21 | 2d? |  |  |  | 黄启彬 | 16h | 16h | 480 | 480 | 480 |
| 34 | 4.4.3 | 管理飞机接收日程 | 2d? | 2013-11-22 A | 2013-11-25 A |  | 100% |  |  | 2013-11-22 | 2013-11-25 | 2d? |  |  |  | 黄启彬 | 16h | 16h | 480 | 480 | 480 |
| 35 | 4.4.4 | 维护发动机交付通知 | 2d? | 2013-11-26 A | 2013-11-27 A |  | 100% |  |  | 2013-11-26 | 2013-11-27 | 2d? |  |  |  | 黄启彬 | 16h | 16h | 480 | 480 | 480 |
| 36 | 4.4.5 | 管理发动机接收日程 | 2d? | 2013-11-28 A | 2013-11-29 A |  | 100% |  |  | 2013-11-28 | 2013-11-29 | 2d? |  |  |  | 黄启彬 | 16h | 16h | 480 | 480 | 480 |
| 37 | 4.5 | **查询分析** | 42.5d? | 2013-12-03 A | 2014-01-30 | 20, 26 | 29% | 30.36d? |  | 2013-12-03 | 2014-01-21 | 36d? | -39.5d | 0d |  |  | 56h | 16h | 1,680 | 1,680 | 480 |
| 38 | 4.5.1 | 查询合同 | 2d? | 2013-12-03 A | 2013-12-04 A |  | 100% |  |  | 2013-12-03 | 2013-12-04 | 2d? |  |  |  | 陈春勇 | 16h | 16h | 480 | 480 | 480 |
| 39 | 4.5.2 | 分析飞机价格 | 3d? | 2014-01-17 | 2014-01-24 |  |  |  |  | 2014-01-15 | 2014-01-17 | 3d? | -35.25d | 0d |  | 林晓伟 | 24h |  | 720 | 720 |  |
| 40 | 4.5.3 | 分析发动机价格 | 2d? | 2014-01-22 | 2014-01-30 |  |  |  |  | 2014-01-20 | 2014-01-21 | 2d? | -39.5d | 0d |  | 林晓伟 | 16h |  | 480 | 480 |  |
| 41 | 5 | **应付款模块** | 9d | 2013-12-10 | 2013-12-20 | 14 | 69% | 2.75d | 2013-12-06 | 2013-12-10 | 2013-12-20 | 9d |  |  |  |  | 288h | 200h | 8,640 | 8,640 | 6,000 |
| 42 | 5.1 | 领域模型设计 | 3d? | 2013-12-06 A | 2013-12-10 A |  | 100% |  |  | 2013-12-06 | 2013-12-10 | 3d? |  |  |  | 丁志浩 | 24h | 24h | 720 | 720 | 720 |
| 43 | 5.2 | **管理付款计划** | 3d? | 2013-12-12 A | 2013-12-16 A |  | 100% |  |  | 2013-12-12 | 2013-12-16 | 3d? |  |  |  |  | 32h | 32h | 960 | 960 | 960 |
| 44 | 5.2.1 | 管理飞机付款计划 | 2d? | 2013-12-13 A | 2013-12-16 A |  | 100% |  |  | 2013-12-13 | 2013-12-16 | 2d? |  |  |  | 陈春勇 | 16h | 16h | 480 | 480 | 480 |
| 45 | 4.2 | 管理发动机付款计划 | 1d? | 2013-12-12 A | 2013-12-12 A |  | 100% |  |  | 2013-12-12 | 2013-12-12 | 1d? |  |  |  | 陈春勇 | 8h | 8h | 240 | 240 | 240 |
| 46 | 5.2.3 | 管理一般付款计划 | 1d? | 2013-12-13 A | 2013-12-13 A |  | 100% |  |  | 2013-12-13 | 2013-12-13 | 1d? |  |  |  | 陈春勇 | 8h | 8h | 240 | 240 | 240 |
| 47 | 5.3 | **管理发票** | 8.25d? | 2013-12-10 A | 2013-12-20 A |  | 100% |  |  | 2013-12-10 | 2013-12-20 | 8.25d? |  |  |  |  | 80h | 80h | 2,400 | 2,400 | 2,400 |
| 48 | 5.3.1 | 维护采购发票 | 2d? | 2013-12-13 A | 2013-12-19 A |  | 100% |  |  | 2013-12-13 | 2013-12-19 | 2d? |  |  |  | 黄启彬 | 16h | 16h | 480 | 480 | 480 |
| 49 | 5.3.2 | 维护预付款发票 | 1d? | 2013-12-13 A | 2013-12-13 A |  | 100% |  |  | 2013-12-13 | 2013-12-13 | 1d? |  |  |  | 黄启彬 | 8h | 8h | 240 | 240 | 240 |
| 50 | 5.3.3 | 维护租赁发票 | 1d? | 2013-12-13 A | 2013-12-20 A |  | 100% |  |  | 2013-12-13 | 2013-12-20 | 1d? |  |  |  | 黄启彬 | 8h | 8h | 240 | 240 | 240 |
| 51 | 5.3.4 | 维护贷项单 | 1d? | 2013-12-10 A | 2013-12-10 A |  | 100% |  |  | 2013-12-10 | 2013-12-10 | 1d? |  |  |  | 黄启彬 | 8h | 8h | 240 | 240 | 240 |
| 52 | 5.3.5 | 维护发动机维修发票 | 2d? | 2013-12-10 A | 2013-12-11 A |  | 100% |  |  | 2013-12-10 | 2013-12-11 | 2d? |  |  |  | 林晓伟 | 16h | 16h | 480 | 480 | 480 |
| 53 | 5.3.6 | 维护APU维修发票 | 1d? | 2013-12-12 A | 2013-12-12 A |  | 100% |  |  | 2013-12-12 | 2013-12-12 | 1d? |  |  |  | 林晓伟 | 8h | 8h | 240 | 240 | 240 |
| 54 | 5.3.7 | 维护起落架维修发票 | 1d? | 2013-12-13 A | 2013-12-13 A |  | 100% |  |  | 2013-12-13 | 2013-12-13 | 1d? |  |  |  | 林晓伟 | 8h | 8h | 240 | 240 | 240 |
| 55 | 5.3.8 | 维护机身维修发票 | 1d? | 2013-12-16 A | 2013-12-16 A |  | 100% |  |  | 2013-12-16 | 2013-12-16 | 1d? |  |  |  | 林晓伟 | 8h | 8h | 240 | 240 | 240 |
| 56 | 5.4 | 维护付款通知 | 2d? | 2013-12-19 A | 2013-12-20 A |  | 100% |  |  | 2013-12-19 | 2013-12-20 | 2d? |  |  |  | 林晓伟 | 16h | 16h | 480 | 480 | 480 |

| ID | WBS | Task | Duration | Start | Finish | Predecessors | Complete | Remaining | Baseline start | Baseline finish | Baseline duration | Total slack | Free slack | Resources | Work | Actual work | Cost | Baseline cost | Actual cost |
| --- | --- | --- | --- | --- | --- | --- | --- | --- | --- | --- | --- | --- | --- | --- | --- | --- | --- | --- | --- |
| 57 | 5.5 | **管理保函** | 8d? | 2013-12-10 A | 2013-12-19 A |  | 100% |  | 2013-12-10 | 2013-12-19 | 8d? |  |  |  | 32h | 32h | 960 | 960 | 960 |
| 58 | 5.5.1 | 维护租赁保证金 | 2d? | 2013-12-10 A | 2013-12-11 A |  | 100% |  | 2013-12-10 | 2013-12-11 | 2d? |  |  | 陈春勇 | 16h | 16h | 480 | 480 | 480 |
| 59 | 5.5.2 | 维护大修保证金 | 2d? | 2013-12-18 A | 2013-12-19 A |  | 100% |  | 2013-12-18 | 2013-12-19 | 2d? |  |  | 陈春勇 | 16h | 16h | 480 | 480 | 480 |
| 60 | 5.6 | **管理飞机价格** | 6d? | 2013-12-11 | 2013-12-18 |  |  |  | 2013-12-11 | 2013-12-18 | 6d? | 2d |  |  | 48h |  | 1,440 | 1,440 |  |
| 61 | 5.6.1 | 设置飞机价格公式 | 2d? | 2013-12-11 | 2013-12-12 |  |  |  | 2013-12-11 | 2013-12-12 | 2d? | 6d |  | 丁志浩 | 16h |  | 480 | 480 |  |
| 62 | 5.6.2 | 设置发动机价格公式 | 2d? | 2013-12-13 | 2013-12-16 |  |  |  | 2013-12-13 | 2013-12-16 | 2d? | 4d |  | 丁志浩 | 16h |  | 480 | 480 |  |
| 63 | 5.6.3 | 计算飞机价格 | 2d? | 2013-12-17 | 2013-12-18 |  |  |  | 2013-12-17 | 2013-12-18 | 2d? | 2d |  | 丁志浩 | 16h |  | 480 | 480 |  |
| 64 | 5.7 | **查询分析** | 5.25d? | 2013-12-17 A | 2013-12-24 |  | 29% | 3.75d? | 2013-12-17 | 2013-12-24 | 5.25d? | -1.25d | 0d |  | 56h | 16h | 1,680 | 1,680 | 480 |
| 65 | 5.7.1 | 查询付款计划 | 1d? | 2013-12-17 A | 2013-12-17 A | 43 | 100% |  | 2013-12-17 | 2013-12-17 | 1d? |  |  | 陈春勇 | 8h | 8h | 240 | 240 | 240 |
| 66 | 5.7.2 | 预测资金需求 | 2d? | 2013-12-17 A | 2013-12-18 | 43 | 50% | 1d? | 2013-12-17 | 2013-12-18 | 2d? | 2d |  | 黄启彬 | 16h | 8h | 480 | 480 | 240 |
| 67 | 5.7.3 | 分析付款计划执行 | 2d? | 2013-12-17 | 2013-12-18 | 43 |  |  | 2013-12-17 | 2013-12-18 | 2d? | 2d |  | 林晓伟 | 16h |  | 480 | 480 |  |
| 68 | 5.7.4 | 分析维修成本 | 2d? | 2013-12-20 | 2013-12-24 | 47 |  |  | 2013-12-20 | 2013-12-24 | 2d? | -1.25d | 0d | 黄启彬 | 16h |  | 480 | 480 |  |
| 69 | 6 | **项目管理模块** | 17d? | 2013-12-23 A | 2014-01-14 | 41 | 18% | 14d? | 2013-12-23 | 2014-01-14 | 17d? | -14d | 0d |  | 136h | 24h | 4,080 | 4,080 | 720 |
| 70 | 6.1 | 领域模型设计 | 3d? | 2013-12-23 A | 2013-12-25 A |  | 100% |  | 2013-12-23 | 2013-12-25 | 3d? |  |  | 丁志浩 | 24h | 24h | 720 | 720 | 720 |
| 71 | 6.2 | **管理项目模板** | 6d? | 2013-12-26 | 2014-01-02 |  |  |  | 2013-12-26 | 2014-01-02 | 6d? | -41d | 0d |  | 48h |  | 1,440 | 1,440 |  |
| 72 | 6.2.1 | 维护任务模板 | 2d? | 2013-12-26 | 2013-12-27 |  |  |  | 2013-12-26 | 2013-12-27 | 2d? | -37d | 0d | 丁志浩 | 16h |  | 480 | 480 |  |
| 73 | 6.2.2 | 维护子项模板 | 2d? | 2013-12-30 | 2013-12-31 |  |  |  | 2013-12-30 | 2013-12-31 | 2d? | -39d | 0d | 丁志浩 | 16h |  | 480 | 480 |  |
| 74 | 6.2.3 | 维护项目模板 | 2d? | 2014-01-01 | 2014-01-02 |  |  |  | 2014-01-01 | 2014-01-02 | 2d? | -41d | 0d | 丁志浩 | 16h |  | 480 | 480 |  |
| 75 | 6.3 | **编制项目计划** | 4d? | 2014-01-03 | 2014-01-08 |  |  |  | 2014-01-03 | 2014-01-08 | 4d? | -45d | 0d |  | 32h |  | 960 | 960 |  |
| 76 | 6.3.1 | 维护项目计划 | 2d? | 2014-01-03 | 2014-01-06 |  |  |  | 2014-01-03 | 2014-01-06 | 2d? | -43d | 0d | 丁志浩 | 16h |  | 480 | 480 |  |
| 77 | 6.3.2 | 发布项目计划 | 2d? | 2014-01-07 | 2014-01-08 |  |  |  | 2014-01-07 | 2014-01-08 | 2d? | -45d | 0d | 丁志浩 | 16h |  | 480 | 480 |  |
| 78 | 6.4 | **执行项目计划** | 4d? | 2014-01-09 | 2014-01-14 |  |  |  | 2014-01-09 | 2014-01-14 | 4d? | -49d | 0d |  | 32h |  | 960 | 960 |  |
| 79 | 6.4.1 | 分派任务 | 2d? | 2014-01-09 | 2014-01-10 |  |  |  | 2014-01-09 | 2014-01-10 | 2d? | -47d | 0d | 丁志浩 | 16h |  | 480 | 480 |  |
| 80 | 6.4.2 | 查询项目执行 | 2d? | 2014-01-13 | 2014-01-14 |  |  |  | 2014-01-13 | 2014-01-14 | 2d? | -49d | 0d | 丁志浩 | 16h |  | 480 | 480 |  |

| ID | WBS | Task | Duration | Start | Finish | Predecessors | Complete | Remaining | Baseline start | Baseline finish | Baseline duration | Total slack | Free slack | Constraint | Resources | Work | Actual work | Cost | Baseline cost | Actual cost |
| --- | --- | --- | --- | --- | --- | --- | --- | --- | --- | --- | --- | --- | --- | --- | --- | --- | --- | --- | --- | --- |
| 81 | 7 | **运力规划模块** | 69d? | 2013-11-07 A | 2014-02-11 | 69 | 91% | 6.18d? | 2013-11-07 | 2014-02-03 | 62.9d? | 0d |  |  |  | 198.48h | 179.28h | 5,954.4 | 5,976 | 5,378.4 |
| 82 | 7.1 | 领域模型设计 | 3d? | 2013-12-25 A | 2013-12-27 A |  | 100% |  | 2013-12-25 | 2013-12-27 | 3d? |  |  | start no earlier than 2013-12-25 | 黄启彬 | 24h | 24h | 720 | 720 | 720 |
| 83 | 7.2 | **编制运力规划** | 8.95d? | 2014-01-02 A | 2014-01-15 |  | 97% | 0.26d? | 2014-01-02 | 2014-01-15 | 8.95d? | -0.2d | 0d |  |  | 54.4h | 52.8h | 1,632 | 1,632 | 1,584 |
| 84 | 7.2.1 | 民航五年规划 | 1d? | 2014-01-02 A | 2014-01-03 A |  | 100% |  | 2014-01-02 | 2014-01-03 | 1d? |  |  |  | 黄启彬 | 8h | 8h | 240 | 240 | 240 |
| 85 | 7.2.2 | 管理五年规划 | 1d? | 2014-01-03 A | 2014-01-06 A |  | 100% |  | 2014-01-03 | 2014-01-06 | 1d? |  |  |  | 黄启彬 | 8h | 8h | 240 | 240 | 240 |
| 86 | 7.2.3 | 准备编制 | 1d? | 2014-01-06 A | 2014-01-08 A |  | 100% |  | 2014-01-06 | 2014-01-08 | 1d? |  |  | finish no earlier than 2014-01-07 | 黄启彬 | 8h | 8h | 240 | 240 | 240 |
| 87 | 7.2.4 | 编制规划 | 1d? | 2014-01-06 A | 2014-01-15 |  | 80% | 0.2d? | 2014-01-06 | 2014-01-15 | 1d? | -4.2d | 0d | finish no earlier than 2014-01-07 | 黄启彬 | 8h | 6.4h | 240 | 240 | 192 |
| 88 | 7.2.5 | 发布规划 | 1d? | 2014-01-08 A | 2014-01-09 A |  | 100% |  | 2014-01-08 | 2014-01-09 | 1d? |  |  | finish no earlier than 2014-01-09 | 黄启彬 | 8h | 8h | 240 | 240 | 240 |
| 89 | 7.2.6 | 报送规划 | 1d? | 2014-01-09 A | 2014-01-10 A |  | 100% |  | 2014-01-09 | 2014-01-10 | 1d? |  |  | finish no earlier than 2014-01-09 | 黄启彬 | 8h | 8h | 240 | 240 | 240 |
| 90 | 7.2.7 | 编制备发计划 | 0.8d? | 2014-01-10 A | 2014-01-14 A |  | 100% |  | 2014-01-10 | 2014-01-14 | 0.8d? |  |  |  | 黄启彬 | 6.4h | 6.4h | 192 | 192 | 192 |
| 91 | 7.3 | **执行运力规划** | 2d? | 2014-01-14 A | 2014-01-15 |  | 93% | 0.13d? | 2014-01-14 | 2014-01-31 | 13.1d? | 0d |  |  |  | 24h | 22.4h | 720 | 720 | 672 |
| 92 | 7.3.1 | 维护申请 | 1d? | 2014-01-14 A | 2014-01-14 A |  | 100% |  | 2014-01-14 | 2014-01-31 | 1d? |  |  |  | 陈春勇 | 8h | 8h | 240 | 240 | 240 |
| 93 | 7.3.2 | 维护批文 | 1d? | 2014-01-15 A | 2014-01-15 A |  | 100% |  | 2014-01-15 | 2014-01-15 | 1d? |  |  |  | 陈春勇 | 8h | 8h | 240 | 240 | 240 |
| 94 | 7.3.3 | 完成规划 | 1d? | 2014-01-14 A | 2014-01-15 |  | 80% | 0.2d? | 2014-01-14 | 2014-01-15 | 1d? | -4.2d | 0d |  | 黄启彬 | 8h | 6.4h | 240 | 240 | 192 |
| 95 | 7.4 | **更新飞机数据** | 1d? | 2013-11-07 A | 2013-11-07 A |  | 100% |  | 2013-11-07 | 2013-11-07 | 1d? |  |  |  |  | 8h | 8h | 240 | 240 | 240 |
| 96 | 7.4.1 | 变更所有权 | 1d? | 2013-11-07 A | 2013-11-07 A |  | 100% |  | 2013-11-07 | 2013-11-07 | 1d? |  |  |  | 陈春勇 | 8h | 8h | 240 | 240 | 240 |
| 97 | 7.5 | **分析规划执行** | 65d? | 2013-11-13 A | 2014-02-11 A |  | 100% |  | 2013-11-13 | 2014-02-03 | 58.9d? |  |  |  |  | 24.08h | 24.08h | 722.4 | 744 | 722.4 |
| 98 | 7.5.1 | 查询规划 | 2d? | 2014-01-06 A | 2014-02-11 A |  | 100% |  | 2014-01-14 | 2014-02-03 | 2d? |  |  | finish no earlier than 2014-02-11 | 陈春勇 | 0.08h | 0.08h | 2.4 | 24 | 2.4 |
| 99 | 7.5.2 | 分析规划执行 | 1d? | 2014-02-10 A | 2014-02-10 A |  | 100% |  | 2014-01-16 | 2014-01-16 | 1d? |  |  | start no earlier than 2014-02-10 | 陈春勇 | 8h | 8h | 240 | 240 | 240 |
| 100 | 7.5.3 | 查询申请 | 1d? | 2013-11-13 A | 2013-11-13 A |  | 100% |  | 2013-11-13 | 2013-11-13 | 1d? |  |  |  | 陈春勇 | 8h | 8h | 240 | 240 | 240 |
| 101 | 7.5.4 | 查询批文 | 1d? | 2013-11-14 A | 2013-11-14 A |  | 100% |  | 2013-11-14 | 2013-11-14 | 1d? |  |  |  | 陈春勇 | 8h | 8h | 240 | 240 | 240 |
| 102 | 7.6 | **查询分析** | 20.75d? | 2014-01-02 A | 2014-01-30 |  | 75% | 5.19d? | 2014-01-02 | 2014-01-30 | 20.75d? | -14.75d | 0d |  |  | 64h | 48h | 1,920 | 1,920 | 1,440 |
| 103 | 7.6.1 | 查询飞机档案 | 2d | 2014-01-29 | 2014-01-30 |  |  |  | 2014-01-29 | 2014-01-30 | 2d | -16d | 0d | finish no earlier than 2014-01-30 | 陈春勇 | 16h |  | 480 | 480 |  |
| 104 | 7.6.2 | 分析运力趋势 | 1d? | 2014-01-02 A | 2014-01-03 A |  | 100% |  | 2014-01-02 | 2014-01-03 | 1d? |  |  |  | 林晓伟 | 8h | 8h | 240 | 240 | 240 |
| 105 | 7.6.3 | 分析客机运力趋势 | 1d? | 2014-01-03 A | 2014-01-06 A |  | 100% |  | 2014-01-03 | 2014-01-06 | 1d? |  |  |  | 林晓伟 | 8h | 8h | 240 | 240 | 240 |
| 106 | 7.6.4 | 统计在册飞机 | 1d? | 2014-01-06 A | 2014-01-07 A |  | 100% |  | 2014-01-06 | 2014-01-07 | 1d? |  |  |  | 林晓伟 | 8h | 8h | 240 | 240 | 240 |
| 107 | 7.6.5 | 分析飞机引进方式 | 1d? | 2014-01-07 A | 2014-01-08 A |  | 100% |  | 2014-01-07 | 2014-01-08 | 1d? |  |  |  | 林晓伟 | 8h | 8h | 240 | 240 | 240 |
| 108 | 7.6.6 | 分析机队结构 | 1d? | 2014-01-08 A | 2014-01-09 A |  | 100% |  | 2014-01-08 | 2014-01-09 | 1d? |  |  |  | 林晓伟 | 8h | 8h | 240 | 240 | 240 |
| 109 | 7.6.7 | 分析飞机机龄 | 1d? | 2014-01-09 A | 2014-01-10 A |  | 100% |  | 2014-01-09 | 2014-01-10 | 1d? |  |  |  | 林晓伟 | 8h | 8h | 240 | 240 | 240 |

| ID | WBS | Task | Duration | Start | Finish | Predecessors | Complete | Remaining | Baseline start | Baseline finish | Baseline duration | Total slack | Free slack | Constraint | Resources | Work | Actual work | Cost | Baseline cost | Actual cost |
| --- | --- | --- | --- | --- | --- | --- | --- | --- | --- | --- | --- | --- | --- | --- | --- | --- | --- | --- | --- | --- |
| 110 | 8 | **管理门户模块** | 3d? | 2014-02-12 | 2014-02-14 | 81 |  |  | 2014-02-03 | 2014-02-06 | 3d? | -24d | 0d |  |  | 96h |  | 2,880 | 2,880 |  |
| 111 | 8.1 | 领导门户 | 3d? | 2014-02-12 | 2014-02-14 |  |  |  | 2014-02-03 | 2014-02-06 | 3d? | -24d | 0d |  | 林晓伟 | 24h |  | 720 | 720 |  |
| 112 | 8.2 | 规划门户 | 3d? | 2014-02-12 | 2014-02-14 |  |  |  | 2014-02-03 | 2014-02-06 | 3d? | -24d | 0d |  | 黄启彬 | 24h |  | 720 | 720 |  |
| 113 | 8.3 | 机务门户 | 3d? | 2014-02-12 | 2014-02-14 |  |  |  | 2014-02-03 | 2014-02-06 | 3d? | -24d | 0d |  | 丁志浩 | 24h |  | 720 | 720 |  |
| 114 | 8.4 | 财务门户 | 3d? | 2014-02-12 | 2014-02-14 |  |  |  | 2014-02-03 | 2014-02-06 | 3d? | -24d | 0d | start no earlier than 2014-01-29 | 陈春勇 | 24h |  | 720 | 720 |  |
| 115 | 9 | **飞机构型模块** | 26.75d? | 2014-01-14 A | 2014-02-19 | 110 | 69% | 8.17d? | 2014-02-06 | 2014-02-19 | 9d? | 12.25d |  |  |  | 72h | 50h | 2,160 | 2,160 | 1,500 |
| 116 | 9.1 | 领域模型设计 | 3d? | 2014-01-14 A | 2014-02-17 |  | 75% | 0.75d? | 2014-02-06 | 2014-02-11 | 3d? | 14.25d |  | start no earlier than 2014-01-14 | 林晓伟 | 24h | 18h | 720 | 720 | 540 |
| 117 | 9.2 | **管理飞机构型** | 19.75d? | 2014-01-22 A | 2014-02-18 |  | 75% | 4.94d? | 2014-02-11 | 2014-02-17 | 4d? | 13.25d |  |  |  | 32h | 24h | 960 | 960 | 720 |
| 118 | 9.2.1 | 维护飞机系列 | 2d? | 2014-01-22 A | 2014-01-23 A |  | 100% |  | 2014-02-11 | 2014-02-13 | 2d? |  |  | start no earlier than 2014-01-17 | 林晓伟 | 16h | 16h | 480 | 480 | 480 |
| 119 | 9.2.2 | 维护飞机型号 | 1d? | 2014-01-28 A | 2014-01-28 A |  | 100% |  | 2014-02-13 | 2014-02-14 | 1d? |  |  | finish no earlier than 2014-01-21 | 林晓伟 | 8h | 8h | 240 | 240 | 240 |
| 120 | 9.2.3 | 维护飞机配置 | 1d? | 2014-02-17 | 2014-02-18 |  |  |  | 2014-02-14 | 2014-02-17 | 1d? | 13.25d |  | finish no earlier than 2014-01-22 | 林晓伟 | 8h |  | 240 | 240 |  |
| 121 | 9.3 | **管理飞机数据** | 12.75d? | 2014-02-03 A | 2014-02-19 |  | 50% | 6.38d? | 2014-02-17 | 2014-02-19 | 2d? | 12.25d |  |  |  | 16h | 8h | 480 | 480 | 240 |
| 122 | 9.3.1 | 维护飞机证照 | 1d? | 2014-02-03 A | 2014-02-03 A |  | 100% |  | 2014-02-17 | 2014-02-18 | 1d? |  |  | finish no earlier than 2014-01-23 | 林晓伟 | 8h | 8h | 240 | 240 | 240 |
| 123 | 9.3.2 | 查询现役飞机 | 1d? | 2014-02-18 | 2014-02-19 |  |  |  | 2014-02-18 | 2014-02-19 | 1d? | 12.25d |  | finish no earlier than 2014-01-24 | 林晓伟 | 8h |  | 240 | 240 |  |
| 124 | 10 | **基础管理模块** | 11d? | 2014-01-14 A | 2014-01-28 |  | 45% | 6d? | 2014-01-14 | 2014-02-11 | 19.8d? | 28d |  |  |  | 88h | 40h | 2,640 | 2,640 | 1,200 |
| 125 | 10.1 | 领域模型设计 | 3d | 2014-01-14 A | 2014-01-16 A |  | 100% |  | 2014-01-14 | 2014-01-16 | 3d |  |  | start no earlier than 2014-01-14 | 陈春勇 | 24h | 24h | 720 | 720 | 720 |
| 126 | 10.2 | **管理授权** | 3d? | 2014-01-17 | 2014-01-21 |  |  |  | 2014-01-17 | 2014-01-21 | 3d? | 33d |  |  |  | 24h |  | 720 | 720 |  |
| 127 | 10.2.1 | 管理角色 | 2d? | 2014-01-17 | 2014-01-20 |  |  |  | 2014-01-17 | 2014-01-20 | 2d? | 34d |  | finish no earlier than 2014-01-20 | 陈春勇 | 16h |  | 480 | 480 |  |
| 128 | 10.2.2 | 管理用户 | 1d? | 2014-01-21 | 2014-01-21 |  |  |  | 2014-01-21 | 2014-01-21 | 1d? | 33d |  | start no earlier than 2014-01-21 | 陈春勇 | 8h |  | 240 | 240 |  |
| 129 | 10.3 | **管理运营资质** | 2d? | 2014-01-22 A | 2014-01-23 A |  | 100% |  | 2014-01-22 | 2014-01-23 | 2d? |  |  |  |  | 16h | 16h | 480 | 480 | 480 |
| 130 | 10.3.1 | 维护证照种类 | 1d? | 2014-01-22 A | 2014-01-22 A |  | 100% |  | 2014-01-22 | 2014-01-22 | 1d? |  |  | start no earlier than 2014-01-22 | 林晓伟 | 8h | 8h | 240 | 240 | 240 |
| 131 | 10.3.2 | 维护经营证照 | 1d? | 2014-01-23 A | 2014-01-23 A |  | 100% |  | 2014-01-23 | 2014-01-23 | 1d? |  |  | start no earlier than 2014-01-23 | 林晓伟 | 8h | 8h | 240 | 240 | 240 |
| 132 | 10.4 | **维护基础配置** | 3d? | 2014-01-24 | 2014-01-28 |  |  |  | 2014-01-24 | 2014-01-28 | 3d? | 28d |  |  |  | 24h |  | 720 | 720 |  |
| 133 | 10.4.1 | 维护分支机构 | 1d? | 2014-01-24 | 2014-01-24 |  |  |  | 2014-01-24 | 2014-01-24 | 1d? | 30d |  | start no earlier than 2014-01-24 | 陈春勇 | 8h |  | 240 | 240 |  |
| 134 | 10.4.2 | 系统配置 | 1d? | 2014-01-27 | 2014-01-27 |  |  |  | 2014-01-27 | 2014-01-27 | 1d? | 29d |  | start no earlier than 2014-01-27 | 陈春勇 | 8h |  | 240 | 240 |  |
| 135 | 10.4.3 | 管理提醒策略 | 1d? | 2014-01-28 | 2014-01-28 |  |  |  | 2014-01-28 | 2014-01-28 | 1d? | 28d |  | start no earlier than 2014-01-28 | 陈春勇 | 8h |  | 240 | 240 |  |

Notes:
- 134: 系统的基础配置，包括短信网关、发件箱账号、颜色。
- 135: 统一管理各类提醒策略。

| ID | WBS | Task | Duration | Start | Finish | Predecessors | Complete | Baseline start | Baseline finish | Baseline duration | Total slack | Free slack | Constraint | Resources | Work | Actual work | Cost | Baseline cost | Actual cost |
| --- | --- | --- | --- | --- | --- | --- | --- | --- | --- | --- | --- | --- | --- | --- | --- | --- | --- | --- | --- |
| 136 | 11 | **文档库模块** | 3d? | 2014-01-27 A | 2014-01-29 A |  | 100% | 2014-01-27 | 2014-01-29 | 3d? |  |  |  |  | 24h | 24h | 720 | 720 | 720 |
| 137 | 11.1 | 维护文档类型 | 1d? | 2014-01-27 A | 2014-01-27 A |  | 100% | 2014-01-27 | 2014-01-27 | 1d? |  |  | start no earlier than 2014-01-27 | 林晓伟 | 8h | 8h | 240 | 240 | 240 |
| 138 | 11.2 | 搜索文档 | 2d? | 2014-01-28 A | 2014-01-29 A |  | 100% | 2014-01-28 | 2014-01-29 | 2d? |  |  | finish no earlier than 2014-01-29 | 林晓伟 | 16h | 16h | 480 | 480 | 480 |
| 139 | 12 | **发动机管理模块** | 11d? | 2014-02-21 | 2014-03-07 |  |  | 2013-11-01 | 2013-11-01 | 1d? | 0d |  |  |  | 224h |  | 6,720 |  |  |
| 140 | 12.1 | 管理基础配置 | 1d? | 2014-03-03 | 2014-03-03 |  |  |  |  |  | 4d |  | start no earlier than 2014-02-21 | 陈春勇 | 8h |  | 240 |  |  |
| 141 | 12.2 | 维护件序号 | 2d | 2014-02-21 | 2014-02-24 |  |  |  |  |  | 2d |  | start no earlier than 2014-02-21 | 黄启彬 | 16h |  | 480 |  |  |
| 142 | 12.3 | 管理技术解决方案 | 2d | 2014-02-25 | 2014-02-26 |  |  |  |  |  | 0d |  | start no earlier than 2014-02-21 | 黄启彬 | 16h |  | 480 |  |  |
| 143 | 12.4 | **管理发动机构型** | 7d | 2014-02-27 | 2014-03-07 | 141, 142 |  |  |  |  | 0d |  |  |  | 56h |  | 1,680 |  |  |
| 144 | 12.4.1 | 管理基本构型组 | 3d | 2014-02-27 | 2014-03-03 |  |  |  |  |  | 0d |  | start no earlier than 2014-02-21 | 黄启彬 | 24h |  | 720 |  |  |
| 145 | 12.4.2 | 管理特定选型 | 2d | 2014-03-04 | 2014-03-05 | 144 |  |  |  |  | 0d |  | start no earlier than 2014-02-20 | 黄启彬 | 16h |  | 480 |  |  |
| 146 | 12.4.3 | 比较构型差异 | 2d | 2014-03-06 | 2014-03-07 | 144, 145 |  |  |  |  | 0d |  | start no earlier than 2014-02-21 | 黄启彬 | 16h |  | 480 |  |  |
| 147 | 12.5 | **滑油监控** | 5d | 2014-02-21 | 2014-02-27 |  |  |  |  |  | 6d |  |  |  | 40h |  | 1,200 |  |  |
| 148 | 12.5.1 | 管理发动机滑油 | 3d | 2014-02-21 | 2014-02-25 |  |  | 2013-11-01 | 2013-11-01 | 1d? | 8d |  | start no earlier than 2014-02-21 | 丁志浩 | 24h |  | 720 |  |  |
| 149 | 12.5.2 | 管理APU滑油 | 2d | 2014-02-26 | 2014-02-27 |  |  | 2013-11-01 | 2013-11-01 | 1d? | 6d |  | start no earlier than 2014-02-21 | 丁志浩 | 16h |  | 480 |  |  |
| 150 | 12.6 | 修正飞机利用率 | 2d | 2014-02-27 | 2014-02-28 |  |  |  |  |  | 3d | 0d | start no earlier than 2014-02-21 | 林晓伟 | 16h |  | 480 |  |  |
| 151 | 12.7 | 维护拆换记录 | 2d | 2014-02-21 | 2014-02-24 |  |  |  |  |  | 9d |  | start no earlier than 2014-02-21 | 陈春勇 | 16h |  | 480 |  |  |
| 152 | 12.8 | 查询在位信息 | 2d | 2014-02-25 | 2014-02-26 |  |  |  |  |  | 7d |  | start no earlier than 2014-02-21 | 陈春勇 | 16h |  | 480 |  |  |
| 153 | 12.9 | 查询拆装历史 | 2d | 2014-02-27 | 2014-02-28 |  |  |  |  |  | 5d |  | start no earlier than 2014-02-21 | 陈春勇 | 16h |  | 480 |  |  |
| 154 | 12.10 | **控制维修** | 3d? | 2014-03-03 | 2014-03-05 | 150 |  |  |  |  | 2d |  |  |  | 24h |  | 720 |  |  |
| 155 | 12.10.1 | 查看控制方案 | 1d? | 2014-03-05 | 2014-03-05 |  |  |  |  |  | 2d |  | start no earlier than 2014-02-21 | 丁志浩 | 8h |  | 240 |  |  |
| 156 | 12.10.2 | 查询到寿日期 | 2d | 2014-03-03 | 2014-03-04 |  |  |  |  |  | 3d |  | start no earlier than 2014-02-21 | 丁志浩 | 16h |  | 480 |  |  |
| 157 | 13 | **附件管理模块** | 10d? | 2014-02-21 | 2014-03-06 |  |  | 2013-11-01 | 2013-11-01 | 1d? | 1d |  |  |  | 64h |  | 1,920 |  |  |
| 158 | 13.1 | **管理SCN** | 4d | 2014-02-21 | 2014-02-26 |  |  | 2013-11-01 | 2013-11-01 | 1d? | 1d | 0d |  |  | 32h |  | 960 |  |  |
| 159 | 13.1.1 | 维护SCN | 2d | 2014-02-21 | 2014-02-24 |  |  | 2013-11-01 | 2013-11-01 | 1d? | 1d | 0d | start no earlier than 2014-02-21 | 林晓伟 | 16h |  | 480 |  |  |
| 160 | 13.1.2 | 对比SCN | 2d | 2014-02-25 | 2014-02-26 | 159 |  |  |  |  | 1d |  | start no earlier than 2014-02-20 | 林晓伟 | 16h |  | 480 |  |  |
| 161 | 13.2 | 查询AD/SB | 3d | 2014-03-03 | 2014-03-05 | 158 |  |  |  |  | 1d | 0d | start no earlier than 2014-02-21 | 林晓伟 | 24h |  | 720 |  |  |
| 162 | 13.3 | 维护结构损伤 | 1d? | 2014-03-06 | 2014-03-06 | 161 |  |  |  |  | 1d |  | start no earlier than 2014-02-20 | 林晓伟 | 8h |  | 240 |  |  |

Notes:
- 140: 机务相关模块的基础配置，包括维修控制单位、维修工作。
- 141: 包括维护控制方案。
- 144: 包括维护控制方案。
- 145: 包括维护控制方案。
- 148: 需要从AMASIS系统获取相关数据。
- 149: 需要从AMASIS系统获取相关数据。
- 150: 每月初计算一次（否则查看到寿监控时弹出警告），剔除异常数据后，算出飞机平均日利用率、机型平均日利用率、机队平均日利用率。依据平均数据及飞机日利用率变化趋势，人工修正日利用率数据。
- 151: 需要从AMASIS系统获取相关数据。
- 152: 需要从AMASIS系统获取相关数据。
- 153: 需要从AMASIS系统获取相关数据。
- 161: 需要从DPS先获取AD/SB及其完成情况。
